Name,Status,Planned Start,Planned End,Actual Start,Actual End,Task Type,Attached
Site establishment and hoarding,,2027-02-01 07:00,2027-02-12 15:30,,,Temporary,Site
Bulk excavation and piling platform,,2027-02-15 07:00,2027-03-05 15:30,,,Construct,Site works
Pad and strip footings,,2027-03-08 07:00,2027-04-02 15:30,,,Construct,Footings
In-ground services and slab on ground,,2027-04-05 07:00,2027-04-30 15:30,,,Construct,Ground Floor slab; drainage pipes
Ground floor columns and stair core,,2027-05-03 07:00,2027-05-28 15:30,,,Construct,Ground Floor columns; blockwork core
Level 1 PT slab and steel beams,,2027-05-31 07:00,2027-07-02 15:30,,,Construct,Level 1 slab; beams
Level 1 columns and core,,2027-07-05 07:00,2027-07-23 15:30,,,Construct,Level 1 columns
Level 2 PT slab and steel beams,,2027-07-26 07:00,2027-08-27 15:30,,,Construct,Level 2 slab; beams
Level 2 columns and roof slab,,2027-08-30 07:00,2027-10-01 15:30,,,Construct,Level 2 columns; roof slab
Precast facade panels install,,2027-08-16 07:00,2027-10-15 15:30,,,Construct,Precast Concrete Panel 180
Curtain wall and windows,,2027-09-27 07:00,2027-11-19 15:30,,,Construct,Curtain wall; windows
Roof membrane and plant screen,,2027-10-04 07:00,2027-10-29 15:30,,,Construct,Roof membrane; plant screen
Lift installation,,2027-10-11 07:00,2027-12-10 15:30,,,Construct,Passenger lift
Services rough-in Ground Floor,,2027-09-06 07:00,2027-10-22 15:30,,,Construct,Ducts; pipes; cable trays GF
Services rough-in Level 1,,2027-10-04 07:00,2027-11-19 15:30,,,Construct,Ducts; pipes; cable trays L1
Services rough-in Level 2,,2027-11-01 07:00,2027-12-17 15:30,,,Construct,Ducts; pipes; cable trays L2
Rooftop AC units craned in,,2027-11-08 07:00,2027-11-12 15:30,,,Construct,Rooftop packaged AC units
Partitions and ceilings all levels,,2027-11-15 07:00,2028-02-11 15:30,,,Construct,Stud walls; ceilings
Floor finishes and joinery,,2028-01-17 07:00,2028-03-10 15:30,,,Construct,Vinyl; tiles; carpet; joinery
"Fit-off: lights, outlets, sanitary fixtures",,2028-02-07 07:00,2028-03-17 15:30,,,Construct,Light fittings; outlets; WCs; basins
Testing and commissioning,,2028-03-13 07:00,2028-04-07 15:30,,,Construct,All services
Practical completion and handover,,2028-04-14 07:00,2028-04-14 15:30,,,Milestone,
